# Gantt chart

How a schedule from MS Project changed from version to version. A marks actual dates.

## Version 1 (saved 2021-02-04)

Note of the change: plan

| ID | WBS | Task | Duration | Start | Finish | Predecessors | Total float | Constraint |
| --- | --- | --- | --- | --- | --- | --- | --- | --- |
| 1 | 1 | **BCI Project in Liverpool** | 385d? | 2021-02-08 | 2022-07-29 |  |  |  |
| 2 | 1.1 | **Literature Review and ground research** | 38.5d | 2021-02-08 | 2021-04-01 |  |  |  |
| 3 |  | Draft information sheet, research protocol | 22d | 2021-02-10 | 2021-03-11 |  | 99d | finish no earlier than 2021-03-11 |
| 4 |  | Meet with Prof Tang | 1d | 2021-03-12 | 2021-03-12 | 3 | 99d |  |
| 5 |  | Project plan & DNA submission | 0d | 2021-03-26 | 2021-03-26 | 4 | 355d | start no earlier than 2021-03-26 |
| 6 | 1.2 | **Ethnic Approval** | 170d? | 2021-02-08 | 2021-10-01 |  |  |  |
| 7 |  | University REC application | 33d | 2021-02-15 | 2021-03-31 |  | 285d | finish no earlier than 2021-03-31 |
| 8 |  | Obtain HRA through IRAS | 104d | 2021-02-08 | 2021-07-01 |  | 219d | start no earlier than 2021-02-08 |
| 9 |  | Mersey Care Trust R&D Review | 43d | 2021-07-02 | 2021-08-31 | 7, 8 | 219d | finish no earlier than 2021-08-31 |
| 10 |  | Apply for research passport | 23d | 2021-09-01 | 2021-10-01 | 9 | 219d | finish no earlier than 2021-10-01 |
| 11 | 1.3 | **Develop BCI Algorithm** | 131d? | 2021-04-02 | 2021-10-01 | 2 |  |  |
| 12 |  | Obtain EEG cap | 0d | 2021-04-05 | 2021-04-05 |  | 84d | start no earlier than 2021-04-05 |
| 13 |  | Familiar with MATLAB toolbox | 5d | 2021-04-05 | 2021-04-09 | 12 | 84d |  |
| 14 |  | Preprocessing, feature extraction, classification | 45d | 2021-04-12 | 2021-06-11 | 13 | 84d |  |
| 15 |  | Control interface design: Rewarding schedule through image or sound | 40d | 2021-06-14 | 2021-08-06 | 14 | 84d |  |
| 16 |  | Test & verify on BCI interface | 40d | 2021-08-09 | 2021-10-01 | 15 | 84d |  |
| 17 | 2 | **Y1 Report writing** | 158d | 2021-02-08 | 2021-09-15 |  |  |  |
| 18 |  | Y1 Annual Progress Report | 22d | 2021-06-01 | 2021-06-30 |  | 286d | finish no earlier than 2021-06-30 |
| 19 |  | Submission of APR | 0d | 2021-06-30 | 2021-06-30 | 18 | 286d |  |
| 20 |  | Year 1 report: review paper draft | 118d | 2021-02-22 | 2021-08-04 |  | 236d | start no earlier than 2021-02-22 |
| 21 |  | Submission of Year 1 report | 0d | 2021-08-04 | 2021-08-04 | 20 | 236d |  |
| 22 |  | Year 1 IPAP meeting | 0d | 2021-09-08 | 2021-09-08 | 21FS+25d | 236d |  |
| 23 | 3 | **Experiment** | 135d | 2021-10-04 | 2022-04-08 | 11, 6 | 84d |  |
| 24 |  | Invite Volunteers | 30d | 2021-10-04 | 2021-11-12 |  | 84d |  |
| 25 |  | Perform neuralfeedback training | 50d | 2021-12-06 | 2022-02-11 | 24FS+15d, 16 | 84d | start no earlier than 2021-11-01 |
| 26 |  | Initial Data Analysis | 40d | 2022-02-14 | 2022-04-08 | 25 | 84d | start no earlier than 2022-01-03 |
| 27 | 4 | **Y2 Report Writing** | 113d | 2022-03-01 | 2022-08-04 |  |  |  |
| 28 |  | Y2 Annual Progress Report | 38d | 2022-05-09 | 2022-06-29 |  | 26d | start no earlier than 2022-05-09 |
| 29 |  | Submission of APR | 0d | 2022-06-30 | 2022-06-30 | 28 | 26d | start no earlier than 2022-06-30 |
| 30 |  | Year 2 report | 87d | 2022-04-01 | 2022-08-01 |  | 3d | start no earlier than 2022-04-01 |
| 31 |  | Submission of Year 2 report | 0d | 2022-08-04 | 2022-08-04 | 30 | 0d | finish no earlier than 2022-08-04 |

## Version 2 (saved 2021-02-05)

Last finish 2022-08-04 → 2022-08-05 (+1d).

Changed:

| ID | Task | Finish | Duration | Total float | Other |
| --- | --- | --- | --- | --- | --- |
| 1 | **BCI Project in Liverpool** | 2022-07-29 → 2022-08-05 (+7d) | 385d? → 390d? |  |  |
| 6 | **Ethics Application** |  |  |  | was named Ethnic Approval |
| 7 | University REC approval |  |  | 285d → 286d | was named University REC application |
| 23 | **Intervention** |  |  | 84d → 85d | was named Experiment |
